# Eje2-L4Parte5

Schedule from MS Project, 2022-06-01 to 2022-11-07, costs in €.

## Calendars

- Estándar: Mon-Fri 09:00-13:00, 15:00-19:00; Sat-Sun off.

## Resources

| Resource | Group | Rate |
| --- | --- | --- |
| Analista | REINOSO |  |
| Técnico Sistemas | REINOSO |  |
| Programador | REINOSO |  |
| Supervisor | REINOSO |  |
| Diseñador | REINOSO |  |
| Juan Solar |  | 8.75 |
| Lucia Sanchez |  | 9.38 |
| Antonio Legazpi |  | 9.06 |
| Carmen Salcedo |  | 7.81 |
| Silvia Benavent |  |  |
| Francisco Mola |  | 6.88 |
| Pedro Judez |  | 7.5 |
| Enrique Moreno |  |  |

## Schedule

| ID | WBS | Task | Duration | Start | Finish | Predecessors | Total slack | Resources | Work | Cost |
| --- | --- | --- | --- | --- | --- | --- | --- | --- | --- | --- |
| 1 | 1 | **Desarrollo del Software de Gestión** | 114d | 2022-06-01 | 2022-11-07 |  | 0d |  | 1144h | 7,986 |
| 2 | 1.1 | **Análisis** | 42d | 2022-06-01 | 2022-07-28 |  | 0d |  | 344h | 2,535 |
| 3 | 1.1.1 | Definición del Sistema | 12d | 2022-06-01 | 2022-06-16 |  | 0d | Pedro Judez | 96h | 720 |
| 4 | 1.1.2 | Establecimiento de Requisitos | 6d | 2022-06-17 | 2022-06-24 | 3 | 0d | Pedro Judez | 48h | 360 |
| 5 | 1.1.3 | **Análisis de Casos de Uso** | 9d | 2022-06-27 | 2022-07-07 |  | 0d |  | 72h | 540 |
| 6 | 1.1.3.1 | Identificar Actores | 2d | 2022-06-27 | 2022-06-28 | 4 | 0d | Pedro Judez | 16h | 120 |
| 7 | 1.1.3.2 | Identificar Casos de Uso | 3d | 2022-06-29 | 2022-07-01 | 6 | 0d | Pedro Judez | 24h | 180 |
| 8 | 1.1.3.3 | Refinar el DCU | 4d | 2022-07-04 | 2022-07-07 | 7 | 0d | Pedro Judez | 32h | 240 |
| 9 | 1.1.4 | Análisis de Clases | 6d | 2022-07-08 | 2022-07-15 | 5 | 0d | Francisco Mola | 48h | 330 |
| 10 | 1.1.5 | Desarrollo del Interfaz de Usuarios | 3d | 2022-07-18 | 2022-07-20 | 9 | 0d | Pedro Judez | 24h | 180 |
| 11 | 1.1.6 | Análisis de Consistencia | 4d | 2022-07-21 | 2022-07-26 | 10 | 0d | Francisco Mola | 32h | 220 |
| 12 | 1.1.7 | Aprobación del Análisis | 2d | 2022-07-27 | 2022-07-28 | 11 | 0d | Francisco Mola; Pedro Judez | 24h | 185 |
| 13 | 1.2 | **Diseño** | 8d | 2022-07-29 | 2022-08-09 |  | 0d |  | 176h | 1,230 |
| 14 | 1.2.1 | Definición del Arquitectura del Sistema | 2d | 2022-07-29 | 2022-08-01 | 12 | 0d | Pedro Judez; Silvia Benavent | 32h | 220 |
| 15 | 1.2.2 | Diseño de Clases | 4d | 2022-08-02 | 2022-08-05 | 14 | 0d | Francisco Mola; Carmen Salcedo | 48h | 335 |
| 16 | 1.2.3 | Diseño de los Datos | 4d | 2022-08-02 | 2022-08-05 | 14, 15SS | 0d | Pedro Judez; Enrique Moreno | 64h | 440 |
| 17 | 1.2.4 | Verificación del Diseño | 2d | 2022-08-08 | 2022-08-09 | 15, 16 | 0d | Francisco Mola; Enrique Moreno; Pedro Judez | 32h | 235 |
| 18 | 1.3 | **Construcción** | 22d | 2022-08-10 | 2022-09-08 |  | 0d |  | 256h | 1,650 |
| 19 | 1.3.1 | Codificación de las clases | 16d | 2022-08-10 | 2022-08-31 | 13 | 0d | Silvia Benavent | 128h | 800 |
| 20 | 1.3.2 | Desarrollo de la BBDD | 7d | 2022-08-10 | 2022-08-18 | 13 | 9d | Francisco Mola; Enrique Moreno | 64h | 405 |
| 21 | 1.3.3 | Integración del sistema | 4d | 2022-09-01 | 2022-09-06 | 19, 20 | 0d | Enrique Moreno | 32h | 200 |
| 22 | 1.3.4 | Aprobación del sistema | 2d | 2022-09-07 | 2022-09-08 | 21 | 0d | Carmen Salcedo; Pedro Judez | 32h | 245 |
| 23 | 1.4 | **Pruebas** | 26d | 2022-09-09 | 2022-10-14 |  | 0d |  | 240h | 1,571 |
| 24 | 1.4.1 | Ejecución de pruebas unitarias | 16d | 2022-09-09 | 2022-09-30 | 18 | 0d | Silvia Benavent | 128h | 800 |
| 25 | 1.4.2 | Ejecución de pruebas integración | 8d | 2022-09-30 | 2022-10-11 | 24FS-8h | 0d | Francisco Mola | 64h | 400 |
| 26 | 1.4.3 | Ejecución de pruebas aceptación | 2d | 2022-10-13 | 2022-10-14 | 25FS+1d | 0d | Pedro Judez; Carmen Salcedo; Juan Solar | 48h | 371 |
| 27 | 1.5 | Instalación | 16d | 2022-10-17 | 2022-11-07 | 23 | 0d | Pedro Judez | 128h | 1,000 |

| ID | WBS | Task | Duration | Start | Finish | Predecessors | Total slack | Free slack | Resources | Work | Cost |
| --- | --- | --- | --- | --- | --- | --- | --- | --- | --- | --- | --- |
| 28 | 2 | **Desarrollo del servidor WEB** | 71d | 2022-06-01 | 2022-09-07 |  | 43d |  |  | 632h | 4,632.5 |
| 29 | 2.1 | **Análisis Preliminar** | 24d | 2022-06-01 | 2022-07-04 |  | 44d | 0d |  | 232h | 1,645 |
| 30 | 2.1.1 | Definición del Requisitos | 15d | 2022-06-01 | 2022-06-21 |  | 44d | 0d | Francisco Mola | 120h | 825 |
| 31 | 2.1.2 | Definición de Objetivos del Sitio | 4d | 2022-06-01 | 2022-06-06 |  | 55d | 11d | Carmen Salcedo | 32h | 250 |
| 32 | 2.1.3 | Elaboración del Análisis | 9d | 2022-06-22 | 2022-07-04 | 30, 31 | 44d |  | Francisco Mola; Enrique Moreno | 80h | 570 |
| 33 | 2.2 | **Diseño Web** | 12d | 2022-07-05 | 2022-07-20 |  | 43d | 0d |  | 200h | 1,600 |
| 34 | 2.2.1 | Definición de la Arquitectura | 4d | 2022-07-05 | 2022-07-08 | 29 | 44d | 0d | Carmen Salcedo | 32h | 250 |
| 35 | 2.2.2 | Modelo de Presentación | 4d | 2022-07-11 | 2022-07-14 | 34 | 46d | 3d | Carmen Salcedo; Antonio Legazpi | 48h | 385 |
| 36 | 2.2.3 | Modelo de Navegación | 6d | 2022-07-11 | 2022-07-18 | 34 | 44d | 1d | Juan Solar; Enrique Moreno | 64h | 520 |
| 37 | 2.2.4 | Modelo Contenidos | 3d | 2022-07-15 | 2022-07-19 | 34 | 43d | 0d | Carmen Salcedo; Enrique Moreno | 32h | 247.5 |
| 38 | 2.2.5 | Aprobación del diseño por el cliente | 1d | 2022-07-20 | 2022-07-20 | 35, 36, 37 | 43d |  | Francisco Mola; Antonio Legazpi; Enrique Moreno | 24h | 197.5 |
| 39 | 2.3 | **Programación Sitio Web** | 32d | 2022-07-21 | 2022-09-02 |  | 43d | 0d |  | 192h | 1,320 |
| 40 | 2.3.1 | Codificación de las páginas | 8d | 2022-07-21 | 2022-08-01 | 33 | 43d | 0d | Enrique Moreno | 64h | 400 |
| 41 | 2.3.2 | Codificación de Scripts | 19d | 2022-08-02 | 2022-08-26 | 40 | 43d | 0d | Antonio Legazpi; Silvia Benavent | 56h | 367.5 |
| 42 | 2.3.3 | Construcción BBDD Local del sitio | 3d | 2022-08-29 | 2022-08-31 | 41 | 43d | 0d | Francisco Mola; Antonio Legazpi; Enrique Moreno | 40h | 307.5 |
| 43 | 2.3.4 | Integración con los sistemas del cliente | 2d | 2022-09-01 | 2022-09-02 | 41, 42 | 43d |  | Carmen Salcedo; Pedro Judez | 32h | 245 |
| 44 | 2.4 | **Puesta en Funcionamiento** | 3d | 2022-09-05 | 2022-09-07 |  | 43d |  |  | 8h | 67.5 |
| 45 | 2.4.1 | Prueba del Sitio | 1d | 2022-09-05 | 2022-09-05 | 39 | 43d | 0d | Antonio Legazpi | 8h | 67.5 |
| 46 | 2.4.2 | Aceptación | 2d | 2022-09-06 | 2022-09-07 | 45 | 43d |  |  |  |  |
