# L6Parte1a

Schedule from MS Project, 2022-01-03 to 2023-11-20, status date 2022-08-31, costs in €, A marks actual dates.

## Calendars

- Estándar: Mon-Fri 09:00-13:00, 15:00-19:00; Sat-Sun off.

## Resources

| Resource | Group | Rate |
| --- | --- | --- |
| Jefe de proyecto | Interno | 62.5 |
| Analista | Interno | 54.38 |
| Programador | Interno | 43.75 |
| Telefonica | Externo |  |
| InfoDev | Externo |  |
| Dep. Calidad | Externo |  |

## Schedule

| ID | WBS | Task | Type | Duration | Start | Finish | Predecessors | Complete | Remaining | Baseline start | Baseline finish | Baseline duration | Total slack | Free slack | Constraint | Resources | Work | Actual work | Cost | Baseline cost | Actual cost |
| --- | --- | --- | --- | --- | --- | --- | --- | --- | --- | --- | --- | --- | --- | --- | --- | --- | --- | --- | --- | --- | --- |
| 1 | 1 | **Gestión proyecto** |  | 80d | 2022-01-03 A | 2022-04-22 A |  | 100% |  | 2022-01-03 | 2022-04-22 | 80d |  |  |  |  | 240h | 240h | 15,000 | 15,000 | 15,000 |
| 2 | 1.1 | Preparacion del proyecto |  | 80d | 2022-01-03 A | 2022-04-22 A |  | 100% |  | 2022-01-03 | 2022-04-22 | 80d |  |  |  | Jefe de proyecto | 240h | 240h | 15,000 | 15,000 | 15,000 |
| 3 | 1.2 | Aprobacion proyecto Portal | milestone | 0d | 2022-04-22 A | 2022-04-22 A | 2 | 100% |  | 2022-04-22 | 2022-04-22 | 0d |  |  |  |  |  |  |  |  |  |
| 4 | 2 | **VERSION 0: migración de servidores** |  | 68d | 2022-05-01 A | 2022-08-03 A | 3 | 100% |  | 2022-05-01 | 2022-08-10 | 73d |  |  | start no earlier than 2022-05-01 |  | 800h | 800h | 53,930 | 52,050 | 53,930 |
| 5 | 2.1 | Adapatación Portal V0 |  | 55d | 2022-05-02 A | 2022-07-15 A |  | 100% |  | 2022-05-02 | 2022-07-01 | 45d |  |  |  | Analista; Programador | 800h | 800h | 37,550 | 34,050 | 37,550 |
| 6 | 2.2 | **Migración servidores** |  | 68d | 2022-05-01 A | 2022-08-03 A |  | 100% |  | 2022-05-01 | 2022-07-13 | 53d |  |  |  |  |  |  | 16,380 | 18,000 | 16,380 |
| 7 | 2.2.1 | Inicio migración servidores | milestone | 0d | 2022-05-01 A | 2022-05-01 A |  | 100% |  | 2022-05-01 | 2022-05-01 | 0d |  |  |  | Telefonica |  |  | 1,800 | 1,800 | 1,800 |
| 8 | 2.2.2 | Fin migración servidores | milestone | 0d | 2022-08-03 A | 2022-08-03 A | 7FS+68d | 100% |  | 2022-07-13 | 2022-07-13 | 0d |  |  |  | Telefonica |  |  | 14,580 | 16,200 | 14,580 |
| 9 | 2.3 | Versión 0 implantada | milestone | 0d | 2022-08-03 A | 2022-08-03 A | 8 | 100% |  | 2022-08-10 | 2022-08-10 | 0d |  |  |  |  |  |  |  |  |  |
| 10 | 3 | **VERSION 1: nuevas funcionalidades** |  | 318d | 2022-08-04 A | 2023-10-23 | 9 | 8% | 292.16d | 2022-08-11 | 2023-10-24 | 314d | 0d |  |  |  | 2352h | 80h | 141,340 | 139,600 | 4,350.02 |
| 11 | 3.1 | Matriz de requisitos |  | 24d | 2022-08-04 A | 2022-09-06 |  | 71% | 6.86d | 2022-08-11 | 2022-09-07 | 20d | 0d |  |  | Analista | 112h | 80h | 6,090 | 4,350 | 4,350.02 |
| 12 | 3.2 | **Analisis funcional y de diseño** |  | 32d | 2022-09-07 | 2022-10-20 | 11 |  |  | 2022-09-08 | 2022-10-21 | 32d | 0d |  |  |  | 40h |  | 12,675 | 12,675 |  |
| 13 | 3.2.1 | Analisis de Requisitos |  | 2d | 2022-09-07 | 2022-09-08 |  |  |  | 2022-09-08 | 2022-09-09 | 2d | 0d |  |  | Analista | 16h |  | 870 | 870 |  |
| 14 | 3.2.2 | Inicio analisis y diseño | milestone | 0d | 2022-09-08 | 2022-09-08 | 13 |  |  | 2022-09-09 | 2022-09-09 | 0d | 0d |  |  | InfoDev |  |  |  |  |  |
| 15 | 3.2.3 | Verificación analisis y diseño |  | 3d | 2022-10-18 | 2022-10-20 | 16SF |  |  | 2022-10-19 | 2022-10-21 | 3d | 0d |  |  | Analista | 24h |  | 1,305 | 1,305 |  |
| 16 | 3.2.4 | Fin analisis y diseño | milestone | 0d | 2022-10-20 | 2022-10-20 | 14FS+30d |  |  | 2022-10-21 | 2022-10-21 | 0d | 0d |  |  | InfoDev |  |  | 10,500 | 10,500 |  |
| 17 | 3.3 | **DESARROLLO** |  | 185d | 2022-10-20 | 2023-07-06 | 12 |  |  | 2022-10-21 | 2023-07-07 | 185d | 0d |  |  |  | 1800h |  | 103,375 | 103,375 |  |
| 18 | 3.3.1 | **Integración página web** |  | 90d | 2022-10-20 | 2023-02-23 |  |  |  | 2022-10-21 | 2023-02-24 | 90d | 0d |  |  |  | 80h |  | 26,000 | 26,000 |  |
| 19 | 3.3.1.1 | **Integración página web fase 1** |  | 65d | 2022-10-20 | 2023-01-19 |  |  |  | 2022-10-21 | 2023-01-20 | 65d | 0d |  |  |  | 80h |  | 19,250 | 19,250 |  |
| 20 | 3.3.1.1.1 | Inicio desarrollo fase 1 | milestone | 0d | 2022-10-20 | 2022-10-20 |  |  |  | 2022-10-21 | 2022-10-21 | 0d | 0d |  |  | InfoDev |  |  | 4,500 | 4,500 |  |
| 21 | 3.3.1.1.2 | Pruebas aceptación fase 1 |  | 10d | 2023-01-06 | 2023-01-19 | 22SF |  |  | 2023-01-09 | 2023-01-20 | 10d | 0d |  |  | Programador | 80h |  | 3,500 | 3,500 |  |
| 22 | 3.3.1.1.3 | Fin desarrollo fase 1 | milestone | 0d | 2023-01-19 | 2023-01-19 | 20FS+65d |  |  | 2023-01-20 | 2023-01-20 | 0d | 0d |  |  | InfoDev |  |  | 11,250 | 11,250 |  |
| 23 | 3.3.1.2 | **Integración página web fase 2** |  | 25d | 2023-01-19 | 2023-02-23 | 19 |  |  | 2023-01-20 | 2023-02-24 | 25d | 95d |  |  |  |  |  | 6,750 | 6,750 |  |
| 24 | 3.3.1.2.1 | Inicio desarrollo fase 2 | milestone | 0d | 2023-01-19 | 2023-01-19 |  |  |  | 2023-01-20 | 2023-01-20 | 0d | 95d | 0d |  | InfoDev |  |  |  |  |  |
| 25 | 3.3.1.2.2 | Fin desarrollo fase 2 | milestone | 0d | 2023-02-23 | 2023-02-23 | 24FS+25d |  |  | 2023-02-24 | 2023-02-24 | 0d | 95d |  |  | InfoDev |  |  | 6,750 | 6,750 |  |
| 26 | 3.3.2 | Desarrollo servicio comunes |  | 50d | 2023-01-20 | 2023-03-30 | 19 |  |  | 2023-01-23 | 2023-03-31 | 50d | 0d |  |  | Analista; Programador | 720h |  | 32,350 | 32,350 |  |
| 27 | 3.3.3 | Integración funciones CADIS |  | 50d | 2023-03-31 | 2023-06-08 | 26 |  |  | 2023-04-03 | 2023-06-09 | 50d | 0d |  |  | Analista; Programador | 720h |  | 32,350 | 32,350 |  |
| 28 | 3.3.4 | Desarrollo otras funciones |  | 20d | 2023-06-09 | 2023-07-06 | 27 |  |  | 2023-06-12 | 2023-07-07 | 20d | 0d |  |  | Analista; Programador | 280h |  | 12,675 | 12,675 |  |

| ID | WBS | Task | Type | Duration | Start | Finish | Predecessors | Baseline start | Baseline finish | Baseline duration | Total slack | Resources | Work | Cost | Baseline cost |
| --- | --- | --- | --- | --- | --- | --- | --- | --- | --- | --- | --- | --- | --- | --- | --- |
| 29 | 3.4 | **PRUEBAS** |  | 52d | 2023-07-07 | 2023-09-18 | 17 | 2023-07-10 | 2023-09-19 | 52d | 0d |  | 320h | 15,700 | 15,700 |
| 30 | 3.4.1 | Pruebas unitarias y de integración |  | 5d | 2023-07-07 | 2023-07-13 |  | 2023-07-10 | 2023-07-14 | 5d | 0d | Analista | 40h | 2,175 | 2,175 |
| 31 | 3.4.2 | Pruebas de aceptación de usuario |  | 10d | 2023-07-28 | 2023-08-10 | 30FS+10d | 2023-07-31 | 2023-08-11 | 10d | 0d | Analista | 80h | 4,350 | 4,350 |
| 32 | 3.4.3 | Gestión de las modificaciones |  | 22d | 2023-08-11 | 2023-09-11 | 31 | 2023-08-14 | 2023-09-12 | 22d | 0d | Programador | 160h | 7,000 | 7,000 |
| 33 | 3.4.4 | Pruebas finales |  | 5d | 2023-09-12 | 2023-09-18 | 32 | 2023-09-13 | 2023-09-19 | 5d | 0d | Analista | 40h | 2,175 | 2,175 |
| 34 | 3.5 | Aceptación desarrollo VERSION 1 | milestone | 0d | 2023-09-18 | 2023-09-18 | 29 | 2023-09-19 | 2023-09-19 | 0d | 0d |  |  |  |  |
| 35 | 3.6 | **AUDITORIA VERSIÓN 1** |  | 15d | 2023-09-18 | 2023-10-09 | 34 | 2023-09-19 | 2023-10-10 | 15d | 0d |  |  |  |  |
| 36 | 3.6.1 | Inicio auditoria VERSION 1 | milestone | 0d | 2023-09-18 | 2023-09-18 |  | 2023-09-19 | 2023-09-19 | 0d | 0d | Dep. Calidad |  |  |  |
| 37 | 3.6.2 | Fin auditoria VERSIÓN 1 | milestone | 0d | 2023-10-09 | 2023-10-09 | 36FS+15d | 2023-10-10 | 2023-10-10 | 0d | 0d | Dep. Calidad |  |  |  |
| 38 | 3.7 | Implantación VERSIÓN 1 |  | 10d | 2023-10-10 | 2023-10-23 | 35 | 2023-10-11 | 2023-10-24 | 10d | 0d | Programador | 80h | 3,500 | 3,500 |
| 39 | 4 | Cierre Proyecto Portal | milestone | 0d | 2023-11-20 | 2023-11-20 | 38FS+20d | 2023-11-21 | 2023-11-21 | 0d | 0d |  |  |  |  |
